# 模拟呼吸系统

How a schedule from a web Gantt chart changed from version to version. A marks actual dates.

## Version 1 (saved 2024-12-28)

| ID | WBS | Task | Duration | Start | Finish | Complete |
| --- | --- | --- | --- | --- | --- | --- |
| 2 | 1 | **PC端软件开发 A** | 33d | 2024-12-23 | 2025-01-29 | 29% |
| 3 | 1.1 | **网页界面** | 18d | 2024-12-23 | 2025-01-11 | 50% |
| 4 |  | 页面布局 | 3d | 2024-12-23 | 2024-12-25 | 100% |
| 5 |  | 地图操作 | 4d | 2024-12-25 | 2024-12-28 | 100% |
| 6 |  | 离线地图 | 3d | 2024-12-27 | 2024-12-30 | 100% |
| 7 |  | 训练流程 | 2d | 2025-01-02 | 2025-01-03 |  |
| 8 |  | 评分系统 | 2d | 2024-12-31 | 2025-01-01 |  |
| 9 |  | 网页to服务器_通讯 | 4d | 2025-01-04 | 2025-01-08 | 10% |
| 10 |  | 本地配置文件 | 3d | 2025-01-09 | 2025-01-11 |  |
| 11 | 1.2 | **服务器程序** | 15d | 2025-01-13 | 2025-01-29 |  |
| 12 |  | 框架搭建 | 4d | 2025-01-13 | 2025-01-16 |  |
| 13 |  | WS网页通讯驱动 | 3d | 2025-01-17 | 2025-01-20 |  |
| 14 |  | USB串口驱动/wan口驱动 | 4d | 2025-01-21 | 2025-01-24 |  |
| 15 |  | 通讯协议 | 4d | 2025-01-25 | 2025-01-29 |  |
| 16 | 2 | **便携终端 B** | 21d | 2025-01-30 | 2025-02-22 |  |
| 17 |  | 数传/5G资料研究 | 4d | 2025-01-30 | 2025-02-03 |  |
| 18 |  | 数传/5G驱动 | 3d | 2025-02-03 | 2025-02-05 |  |
| 19 |  | 蓝牙驱动 | 2d | 2025-02-06 | 2025-02-07 |  |
| 20 |  | 电池电量 | 1d | 2025-02-08 | 2025-02-08 |  |
| 21 |  | GPS资料研究 | 4d | 2025-02-10 | 2025-02-13 |  |
| 22 |  | GPS驱动 | 2d | 2025-02-14 | 2025-02-15 |  |
| 23 |  | 通讯协议 | 3d | 2025-02-17 | 2025-02-19 |  |
| 24 |  | 整体逻辑 | 3d | 2025-02-20 | 2025-02-22 |  |
| 25 | 3 | **面罩 C** | 14d | 2025-02-24 | 2025-03-11 |  |
| 26 |  | 蓝牙驱动 | 1d | 2025-02-24 | 2025-02-24 |  |
| 27 |  | 电池电量 | 1d | 2025-02-25 | 2025-02-25 |  |
| 28 |  | 压力传感器资料研究 | 5d | 2025-02-27 | 2025-03-04 |  |
| 29 |  | 压力传感器驱动 | 4d | 2025-03-04 | 2025-03-07 |  |
| 30 |  | 整体逻辑 | 3d | 2025-03-08 | 2025-03-11 |  |
| 31 | 4 | **联调阶段** | 17d | 2025-03-12 | 2025-03-31 |  |
| 32 |  | BC 联调 | 4d | 2025-03-12 | 2025-03-15 |  |
| 33 |  | AB联调 | 4d | 2025-03-15 | 2025-03-19 |  |
| 34 |  | ABC联调 | 10d | 2025-03-20 | 2025-03-31 |  |

## Version 2 (saved 2025-01-08)

Last finish stays 2025-03-31.

Changed:

| ID | Task | Complete | Predecessors |
| --- | --- | --- | --- |
| 2 | **PC端软件开发 A** | 29% → 38% |  |
| 3 | **网页界面** | 50% → 66% |  |
| 7 | 训练流程 | 0% → 50% |  |
| 8 | 评分系统 | 0% → 30% |  |
| 10 | 本地配置文件 | 0% → 60% |  |
| 11 | **服务器程序** |  | none → 3 |
| 16 | **便携终端 B** |  | none → 11 |
| 25 | **面罩 C** |  | none → 16 |
| 31 | **联调阶段** |  | none → 25 |
